How a schedule from an exported table changed from version to version. A marks actual dates.

## Version 1 (saved 2026-04-06)

Note of the change: M306/03/01/*

| Task | Start | Finish |
| --- | --- | --- |
| Anforderungen | 2026-04-06T06:00:00.000Z | 2026-05-01T15:00:00.000Z |
| Kick-off Meeting | 2026-04-06T06:00:00.000Z | 2026-04-06T15:00:00.000Z |
| Stakeholder-Interviews | 2026-04-07T06:00:00.000Z | 2026-04-09T15:00:00.000Z |
| IST-Analyse | 2026-04-07T06:00:00.000Z | 2026-04-09T15:00:00.000Z |
| Risikobewertung | 2026-04-07T06:00:00.000Z | 2026-04-08T15:00:00.000Z |
| Projektplan erstellen | 2026-04-09T06:00:00.000Z | 2026-04-10T15:00:00.000Z |
| Anforderungsworkshop | 2026-04-13T06:00:00.000Z | 2026-04-14T15:00:00.000Z |
| Use Cases erstellen | 2026-04-15T06:00:00.000Z | 2026-04-17T15:00:00.000Z |
| Technische Anforderungen dokumentieren | 2026-04-15T06:00:00.000Z | 2026-04-20T15:00:00.000Z |
| Fachliche Anforderungen dokumentieren | 2026-04-20T06:00:00.000Z | 2026-04-22T15:00:00.000Z |
| Anforderungsvalidierung | 2026-04-23T06:00:00.000Z | 2026-04-24T15:00:00.000Z |
| Lastenheft erstellen | 2026-04-27T06:00:00.000Z | 2026-04-29T15:00:00.000Z |
| Anforderungen Review | 2026-04-30T06:00:00.000Z | 2026-05-01T15:00:00.000Z |
| Anforderungen freigeben | 2026-05-01T15:00:00.000Z | 2026-05-01T15:00:00.000Z |
| Design | 2026-05-04T06:00:00.000Z | 2026-05-22T15:00:00.000Z |
| System-Architektur entwerfen | 2026-05-04T06:00:00.000Z | 2026-05-07T15:00:00.000Z |
| Datenbankdesign | 2026-05-04T06:00:00.000Z | 2026-05-06T15:00:00.000Z |
| UI/UX Konzept | 2026-05-04T06:00:00.000Z | 2026-05-07T15:00:00.000Z |
| Sicherheitskonzept | 2026-05-08T06:00:00.000Z | 2026-05-11T15:00:00.000Z |
| API-Design | 2026-05-08T06:00:00.000Z | 2026-05-12T15:00:00.000Z |
| Wireframes erstellen | 2026-05-11T06:00:00.000Z | 2026-05-14T15:00:00.000Z |
| Technisches Konzept | 2026-05-13T06:00:00.000Z | 2026-05-15T15:00:00.000Z |
| Prototyp erstellen | 2026-05-18T06:00:00.000Z | 2026-05-20T15:00:00.000Z |
| Testkonzept erstellen | 2026-05-04T06:00:00.000Z | 2026-05-06T15:00:00.000Z |
| Deployment-Konzept | 2026-05-07T06:00:00.000Z | 2026-05-08T15:00:00.000Z |
| Design Review | 2026-05-21T06:00:00.000Z | 2026-05-22T15:00:00.000Z |
| Design freigeben | 2026-05-22T15:00:00.000Z | 2026-05-22T15:00:00.000Z |
| Realisation | 2026-05-25T06:00:00.000Z | 2026-07-06T15:00:00.000Z |
| Entwicklungsumgebung einrichten | 2026-05-25T06:00:00.000Z | 2026-05-26T15:00:00.000Z |
| CI/CD Pipeline einrichten | 2026-05-25T06:00:00.000Z | 2026-05-26T15:00:00.000Z |
| Frontend Grundstruktur | 2026-05-25T06:00:00.000Z | 2026-05-26T15:00:00.000Z |
| Datenbankimplementierung | 2026-05-27T06:00:00.000Z | 2026-06-01T15:00:00.000Z |
| Backend-Grundstruktur | 2026-05-27T06:00:00.000Z | 2026-06-01T15:00:00.000Z |
| UI Komponenten entwickeln | 2026-05-27T06:00:00.000Z | 2026-06-01T15:00:00.000Z |
| Benutzerauthentifizierung | 2026-06-02T06:00:00.000Z | 2026-06-04T15:00:00.000Z |
| Stammdatenverwaltung | 2026-06-02T06:00:00.000Z | 2026-06-05T15:00:00.000Z |
| Benutzeroberfläche Modul A | 2026-06-02T06:00:00.000Z | 2026-06-08T15:00:00.000Z |
| Benutzeroberfläche Modul B | 2026-06-02T06:00:00.000Z | 2026-06-08T15:00:00.000Z |
| Benutzerverwaltung Backend | 2026-06-05T06:00:00.000Z | 2026-06-09T15:00:00.000Z |
| Geschäftslogik Modul B | 2026-06-02T06:00:00.000Z | 2026-06-08T15:00:00.000Z |
| Geschäftslogik Modul C | 2026-06-09T06:00:00.000Z | 2026-06-12T15:00:00.000Z |
| Benutzeroberfläche Modul C | 2026-06-09T06:00:00.000Z | 2026-06-11T15:00:00.000Z |
| Geschäftslogik Modul A | 2026-06-10T06:00:00.000Z | 2026-06-16T15:00:00.000Z |
| Reportingmodul | 2026-06-15T06:00:00.000Z | 2026-06-18T15:00:00.000Z |
| API Endpoints implementieren | 2026-06-17T06:00:00.000Z | 2026-06-23T15:00:00.000Z |
| Datenmigration | 2026-06-19T06:00:00.000Z | 2026-06-23T15:00:00.000Z |
| Integration Backend/Frontend | 2026-06-24T06:00:00.000Z | 2026-06-29T15:00:00.000Z |
| Performance-Optimierung | 2026-06-30T06:00:00.000Z | 2026-07-02T15:00:00.000Z |
| Code Review | 2026-07-03T06:00:00.000Z | 2026-07-06T15:00:00.000Z |
| Entwicklung abgeschlossen | 2026-07-06T15:00:00.000Z | 2026-07-06T15:00:00.000Z |
| Testing | 2026-07-07T06:00:00.000Z | 2026-08-07T15:00:00.000Z |
| Testumgebung einrichten | 2026-07-07T06:00:00.000Z | 2026-07-07T15:00:00.000Z |
| Unit Tests erstellen | 2026-07-08T06:00:00.000Z | 2026-07-10T15:00:00.000Z |
| Integrationstest | 2026-07-13T06:00:00.000Z | 2026-07-16T15:00:00.000Z |
| Systemtest | 2026-07-20T06:00:00.000Z | 2026-07-24T15:00:00.000Z |
| Performancetest | 2026-07-27T06:00:00.000Z | 2026-07-29T15:00:00.000Z |
| Sicherheitstest | 2026-07-27T06:00:00.000Z | 2026-07-29T15:00:00.000Z |
| Fehlerbehebung Runde 1 | 2026-07-27T06:00:00.000Z | 2026-07-30T15:00:00.000Z |
| Usability Test | 2026-07-30T06:00:00.000Z | 2026-08-03T15:00:00.000Z |
| Regressionstests | 2026-08-04T06:00:00.000Z | 2026-08-05T15:00:00.000Z |
| Retest | 2026-08-03T06:00:00.000Z | 2026-08-05T15:00:00.000Z |
| Fehlerbehebung Runde 2 | 2026-08-03T06:00:00.000Z | 2026-08-05T15:00:00.000Z |
| Test Report erstellen | 2026-08-06T06:00:00.000Z | 2026-08-07T15:00:00.000Z |
| Testing abgeschlossen | 2026-08-07T15:00:00.000Z | 2026-08-07T15:00:00.000Z |
| Abnahme | 2026-08-10T06:00:00.000Z | 2026-08-26T15:00:00.000Z |
| Benutzerhandbuch erstellen | 2026-08-10T06:00:00.000Z | 2026-08-12T15:00:00.000Z |
| Schulungsunterlagen | 2026-08-13T06:00:00.000Z | 2026-08-14T15:00:00.000Z |
| Abnahmetest vorbereiten | 2026-08-10T06:00:00.000Z | 2026-08-11T15:00:00.000Z |
| Abnahmetest durchführen | 2026-08-13T06:00:00.000Z | 2026-08-17T15:00:00.000Z |
| Abnahmedokumentation | 2026-08-18T06:00:00.000Z | 2026-08-19T15:00:00.000Z |

| Task | Start | Finish |
| --- | --- | --- |
| Endabnahme Review | 2026-08-20T06:00:00.000Z | 2026-08-20T15:00:00.000Z |
| Produktionsdeployment | 2026-08-21T06:00:00.000Z | 2026-08-21T15:00:00.000Z |
| Go-Live Vorbereitung | 2026-08-21T06:00:00.000Z | 2026-08-21T15:00:00.000Z |
| Go-Live | 2026-08-21T15:00:00.000Z | 2026-08-21T15:00:00.000Z |
| Post-Launch Support | 2026-08-24T06:00:00.000Z | 2026-08-26T15:00:00.000Z |

## Version 2 (saved 2026-04-07)

Note of the change: M306/03/01 - Task "Lastenheft" entfernt

Last finish 2026-08-26 → 2026-08-13 (-13d).

Removed: Lastenheft erstellen

Changed:

| Task | Start | Finish |
| --- | --- | --- |
| Anforderungen |  | 2026-05-01T15:00:00.000Z → 2026-04-27T15:00:00.000Z (-4d) |
| Anforderungsworkshop | 2026-04-13T06:00:00.000Z → 2026-04-10T06:00:00.000Z (-3d) | 2026-04-14T15:00:00.000Z → 2026-04-13T15:00:00.000Z (-1d) |
| Use Cases erstellen | 2026-04-15T06:00:00.000Z → 2026-04-14T06:00:00.000Z (-1d) | 2026-04-17T15:00:00.000Z → 2026-04-16T15:00:00.000Z (-1d) |
| Technische Anforderungen dokumentieren | 2026-04-15T06:00:00.000Z → 2026-04-14T06:00:00.000Z (-1d) | 2026-04-20T15:00:00.000Z → 2026-04-17T15:00:00.000Z (-3d) |
| Fachliche Anforderungen dokumentieren | 2026-04-20T06:00:00.000Z → 2026-04-17T06:00:00.000Z (-3d) | 2026-04-22T15:00:00.000Z → 2026-04-21T15:00:00.000Z (-1d) |
| Anforderungsvalidierung | 2026-04-23T06:00:00.000Z → 2026-04-22T06:00:00.000Z (-1d) | 2026-04-24T15:00:00.000Z → 2026-04-23T15:00:00.000Z (-1d) |
| Anforderungen Review | 2026-04-30T06:00:00.000Z → 2026-04-24T06:00:00.000Z (-6d) | 2026-05-01T15:00:00.000Z → 2026-04-27T15:00:00.000Z (-4d) |
| Anforderungen freigeben | 2026-05-01T15:00:00.000Z → 2026-04-27T15:00:00.000Z (-4d) | 2026-05-01T15:00:00.000Z → 2026-04-27T15:00:00.000Z (-4d) |
| Design | 2026-05-04T06:00:00.000Z → 2026-04-28T06:00:00.000Z (-6d) | 2026-05-22T15:00:00.000Z → 2026-05-14T15:00:00.000Z (-8d) |
| System-Architektur entwerfen | 2026-05-04T06:00:00.000Z → 2026-04-28T06:00:00.000Z (-6d) | 2026-05-07T15:00:00.000Z → 2026-05-01T15:00:00.000Z (-6d) |
| Datenbankdesign | 2026-05-04T06:00:00.000Z → 2026-04-28T06:00:00.000Z (-6d) | 2026-05-06T15:00:00.000Z → 2026-04-30T15:00:00.000Z (-6d) |
| UI/UX Konzept | 2026-05-04T06:00:00.000Z → 2026-04-28T06:00:00.000Z (-6d) | 2026-05-07T15:00:00.000Z → 2026-05-01T15:00:00.000Z (-6d) |
| Sicherheitskonzept | 2026-05-08T06:00:00.000Z → 2026-05-04T06:00:00.000Z (-4d) | 2026-05-11T15:00:00.000Z → 2026-05-05T15:00:00.000Z (-6d) |
| API-Design | 2026-05-08T06:00:00.000Z → 2026-05-04T06:00:00.000Z (-4d) | 2026-05-12T15:00:00.000Z → 2026-05-06T15:00:00.000Z (-6d) |
| Wireframes erstellen | 2026-05-11T06:00:00.000Z → 2026-05-04T06:00:00.000Z (-7d) | 2026-05-14T15:00:00.000Z → 2026-05-07T15:00:00.000Z (-7d) |
| Technisches Konzept | 2026-05-13T06:00:00.000Z → 2026-05-07T06:00:00.000Z (-6d) | 2026-05-15T15:00:00.000Z → 2026-05-11T15:00:00.000Z (-4d) |
| Prototyp erstellen | 2026-05-18T06:00:00.000Z → 2026-05-08T06:00:00.000Z (-10d) | 2026-05-20T15:00:00.000Z → 2026-05-12T15:00:00.000Z (-8d) |
| Testkonzept erstellen | 2026-05-04T06:00:00.000Z → 2026-04-28T06:00:00.000Z (-6d) | 2026-05-06T15:00:00.000Z → 2026-04-30T15:00:00.000Z (-6d) |
| Deployment-Konzept | 2026-05-07T06:00:00.000Z → 2026-05-01T06:00:00.000Z (-6d) | 2026-05-08T15:00:00.000Z → 2026-05-04T15:00:00.000Z (-4d) |
| Design Review | 2026-05-21T06:00:00.000Z → 2026-05-13T06:00:00.000Z (-8d) | 2026-05-22T15:00:00.000Z → 2026-05-14T15:00:00.000Z (-8d) |
| Design freigeben | 2026-05-22T15:00:00.000Z → 2026-05-14T15:00:00.000Z (-8d) | 2026-05-22T15:00:00.000Z → 2026-05-14T15:00:00.000Z (-8d) |
| Realisation | 2026-05-25T06:00:00.000Z → 2026-05-15T06:00:00.000Z (-10d) | 2026-07-06T15:00:00.000Z → 2026-06-26T15:00:00.000Z (-10d) |
| Entwicklungsumgebung einrichten | 2026-05-25T06:00:00.000Z → 2026-05-15T06:00:00.000Z (-10d) | 2026-05-26T15:00:00.000Z → 2026-05-18T15:00:00.000Z (-8d) |
| CI/CD Pipeline einrichten | 2026-05-25T06:00:00.000Z → 2026-05-15T06:00:00.000Z (-10d) | 2026-05-26T15:00:00.000Z → 2026-05-18T15:00:00.000Z (-8d) |
| Frontend Grundstruktur | 2026-05-25T06:00:00.000Z → 2026-05-15T06:00:00.000Z (-10d) | 2026-05-26T15:00:00.000Z → 2026-05-18T15:00:00.000Z (-8d) |
| Datenbankimplementierung | 2026-05-27T06:00:00.000Z → 2026-05-19T06:00:00.000Z (-8d) | 2026-06-01T15:00:00.000Z → 2026-05-22T15:00:00.000Z (-10d) |
| Backend-Grundstruktur | 2026-05-27T06:00:00.000Z → 2026-05-19T06:00:00.000Z (-8d) | 2026-06-01T15:00:00.000Z → 2026-05-22T15:00:00.000Z (-10d) |
| UI Komponenten entwickeln | 2026-05-27T06:00:00.000Z → 2026-05-19T06:00:00.000Z (-8d) | 2026-06-01T15:00:00.000Z → 2026-05-22T15:00:00.000Z (-10d) |
| Benutzerauthentifizierung | 2026-06-02T06:00:00.000Z → 2026-05-25T06:00:00.000Z (-8d) | 2026-06-04T15:00:00.000Z → 2026-05-27T15:00:00.000Z (-8d) |
| Stammdatenverwaltung | 2026-06-02T06:00:00.000Z → 2026-05-25T06:00:00.000Z (-8d) | 2026-06-05T15:00:00.000Z → 2026-05-28T15:00:00.000Z (-8d) |
| Benutzeroberfläche Modul A | 2026-06-02T06:00:00.000Z → 2026-05-25T06:00:00.000Z (-8d) | 2026-06-08T15:00:00.000Z → 2026-05-29T15:00:00.000Z (-10d) |
| Benutzeroberfläche Modul B | 2026-06-02T06:00:00.000Z → 2026-05-25T06:00:00.000Z (-8d) | 2026-06-08T15:00:00.000Z → 2026-05-29T15:00:00.000Z (-10d) |
| Benutzerverwaltung Backend | 2026-06-05T06:00:00.000Z → 2026-05-28T06:00:00.000Z (-8d) | 2026-06-09T15:00:00.000Z → 2026-06-01T15:00:00.000Z (-8d) |
| Geschäftslogik Modul B | 2026-06-02T06:00:00.000Z → 2026-05-25T06:00:00.000Z (-8d) | 2026-06-08T15:00:00.000Z → 2026-05-29T15:00:00.000Z (-10d) |
| Geschäftslogik Modul C | 2026-06-09T06:00:00.000Z → 2026-06-01T06:00:00.000Z (-8d) | 2026-06-12T15:00:00.000Z → 2026-06-04T15:00:00.000Z (-8d) |
| Benutzeroberfläche Modul C | 2026-06-09T06:00:00.000Z → 2026-06-01T06:00:00.000Z (-8d) | 2026-06-11T15:00:00.000Z → 2026-06-03T15:00:00.000Z (-8d) |
| Geschäftslogik Modul A | 2026-06-10T06:00:00.000Z → 2026-06-02T06:00:00.000Z (-8d) | 2026-06-16T15:00:00.000Z → 2026-06-08T15:00:00.000Z (-8d) |
| Reportingmodul | 2026-06-15T06:00:00.000Z → 2026-06-05T06:00:00.000Z (-10d) | 2026-06-18T15:00:00.000Z → 2026-06-10T15:00:00.000Z (-8d) |
| API Endpoints implementieren | 2026-06-17T06:00:00.000Z → 2026-06-09T06:00:00.000Z (-8d) | 2026-06-23T15:00:00.000Z → 2026-06-15T15:00:00.000Z (-8d) |
| Datenmigration | 2026-06-19T06:00:00.000Z → 2026-05-29T06:00:00.000Z (-21d) | 2026-06-23T15:00:00.000Z → 2026-06-02T15:00:00.000Z (-21d) |
| Integration Backend/Frontend | 2026-06-24T06:00:00.000Z → 2026-06-16T06:00:00.000Z (-8d) | 2026-06-29T15:00:00.000Z → 2026-06-19T15:00:00.000Z (-10d) |
| Performance-Optimierung | 2026-06-30T06:00:00.000Z → 2026-06-22T06:00:00.000Z (-8d) | 2026-07-02T15:00:00.000Z → 2026-06-24T15:00:00.000Z (-8d) |
| Code Review | 2026-07-03T06:00:00.000Z → 2026-06-25T06:00:00.000Z (-8d) | 2026-07-06T15:00:00.000Z → 2026-06-26T15:00:00.000Z (-10d) |
| Entwicklung abgeschlossen | 2026-07-06T15:00:00.000Z → 2026-06-26T15:00:00.000Z (-10d) | 2026-07-06T15:00:00.000Z → 2026-06-26T15:00:00.000Z (-10d) |
| Testing | 2026-07-07T06:00:00.000Z → 2026-06-29T06:00:00.000Z (-8d) | 2026-08-07T15:00:00.000Z → 2026-07-28T15:00:00.000Z (-10d) |
| Testumgebung einrichten | 2026-07-07T06:00:00.000Z → 2026-06-29T06:00:00.000Z (-8d) | 2026-07-07T15:00:00.000Z → 2026-06-29T15:00:00.000Z (-8d) |
| Unit Tests erstellen | 2026-07-08T06:00:00.000Z → 2026-06-30T06:00:00.000Z (-8d) | 2026-07-10T15:00:00.000Z → 2026-07-02T15:00:00.000Z (-8d) |
| Integrationstest | 2026-07-13T06:00:00.000Z → 2026-07-03T06:00:00.000Z (-10d) | 2026-07-16T15:00:00.000Z → 2026-07-08T15:00:00.000Z (-8d) |
| Systemtest | 2026-07-20T06:00:00.000Z → 2026-07-09T06:00:00.000Z (-11d) | 2026-07-24T15:00:00.000Z → 2026-07-15T15:00:00.000Z (-9d) |
| Performancetest | 2026-07-27T06:00:00.000Z → 2026-07-16T06:00:00.000Z (-11d) | 2026-07-29T15:00:00.000Z → 2026-07-20T15:00:00.000Z (-9d) |
| Sicherheitstest | 2026-07-27T06:00:00.000Z → 2026-07-16T06:00:00.000Z (-11d) | 2026-07-29T15:00:00.000Z → 2026-07-20T15:00:00.000Z (-9d) |
| Fehlerbehebung Runde 1 | 2026-07-27T06:00:00.000Z → 2026-07-16T06:00:00.000Z (-11d) | 2026-07-30T15:00:00.000Z → 2026-07-21T15:00:00.000Z (-9d) |
| Usability Test | 2026-07-30T06:00:00.000Z → 2026-07-16T06:00:00.000Z (-14d) | 2026-08-03T15:00:00.000Z → 2026-07-20T15:00:00.000Z (-14d) |
| Regressionstests | 2026-08-04T06:00:00.000Z → 2026-07-21T06:00:00.000Z (-14d) | 2026-08-05T15:00:00.000Z → 2026-07-22T15:00:00.000Z (-14d) |
| Retest | 2026-08-03T06:00:00.000Z → 2026-07-22T06:00:00.000Z (-12d) | 2026-08-05T15:00:00.000Z → 2026-07-24T15:00:00.000Z (-12d) |
| Fehlerbehebung Runde 2 | 2026-08-03T06:00:00.000Z → 2026-07-22T06:00:00.000Z (-12d) | 2026-08-05T15:00:00.000Z → 2026-07-24T15:00:00.000Z (-12d) |
| Test Report erstellen | 2026-08-06T06:00:00.000Z → 2026-07-27T06:00:00.000Z (-10d) | 2026-08-07T15:00:00.000Z → 2026-07-28T15:00:00.000Z (-10d) |
| Testing abgeschlossen | 2026-08-07T15:00:00.000Z → 2026-07-28T15:00:00.000Z (-10d) | 2026-08-07T15:00:00.000Z → 2026-07-28T15:00:00.000Z (-10d) |
| Abnahme | 2026-08-10T06:00:00.000Z → 2026-07-29T06:00:00.000Z (-12d) | 2026-08-26T15:00:00.000Z → 2026-08-13T15:00:00.000Z (-13d) |
| Benutzerhandbuch erstellen | 2026-08-10T06:00:00.000Z → 2026-07-29T06:00:00.000Z (-12d) | 2026-08-12T15:00:00.000Z → 2026-07-31T15:00:00.000Z (-12d) |
| Schulungsunterlagen | 2026-08-13T06:00:00.000Z → 2026-08-03T06:00:00.000Z (-10d) | 2026-08-14T15:00:00.000Z → 2026-08-04T15:00:00.000Z (-10d) |
| Abnahmetest vorbereiten | 2026-08-10T06:00:00.000Z → 2026-07-29T06:00:00.000Z (-12d) | 2026-08-11T15:00:00.000Z → 2026-07-30T15:00:00.000Z (-12d) |
| Abnahmetest durchführen | 2026-08-13T06:00:00.000Z → 2026-07-31T06:00:00.000Z (-13d) | 2026-08-17T15:00:00.000Z → 2026-08-04T15:00:00.000Z (-13d) |
| Abnahmedokumentation | 2026-08-18T06:00:00.000Z → 2026-08-05T06:00:00.000Z (-13d) | 2026-08-19T15:00:00.000Z → 2026-08-06T15:00:00.000Z (-13d) |
| Endabnahme Review | 2026-08-20T06:00:00.000Z → 2026-08-07T06:00:00.000Z (-13d) | 2026-08-20T15:00:00.000Z → 2026-08-07T15:00:00.000Z (-13d) |
| Produktionsdeployment | 2026-08-21T06:00:00.000Z → 2026-08-10T06:00:00.000Z (-11d) | 2026-08-21T15:00:00.000Z → 2026-08-10T15:00:00.000Z (-11d) |
| Go-Live Vorbereitung | 2026-08-21T06:00:00.000Z → 2026-08-10T06:00:00.000Z (-11d) | 2026-08-21T15:00:00.000Z → 2026-08-10T15:00:00.000Z (-11d) |
| Go-Live | 2026-08-21T15:00:00.000Z → 2026-08-10T15:00:00.000Z (-11d) | 2026-08-21T15:00:00.000Z → 2026-08-10T15:00:00.000Z (-11d) |
| Post-Launch Support | 2026-08-24T06:00:00.000Z → 2026-08-11T06:00:00.000Z (-13d) | 2026-08-26T15:00:00.000Z → 2026-08-13T15:00:00.000Z (-13d) |
